# Project2 Req Schedule

Schedule from MS Project, 2025-03-03 to 2026-06-17, costs in $, A marks actual dates.

## Calendars

- Standard: Mon-Fri 08:00-12:00, 13:00-17:00; Sat-Sun off. Exceptions (off unless hours are given): 2025-04-19 08:00-12:00, 13:00-17:00.

## Resources

| Resource | Rate |
| --- | --- |
| PM | 100 |
| Req Lead | 80 |
| Req eng 1 | 60 |
| Req eng 2 | 60 |
| Req eng 3 | 60 |
| Req eng 4 | 60 |
| Arch Lead | 90 |
| Dev Lead | 90 |
| Test Lead | 80 |
| Deploy Lead | 85 |
| Req eng 5 | 50 |
| Legal Team | 50 |
| Client |  |
| Req eng 7 | 50 |
| Req eng 6 | 50 |
| Req eng 8 |  |
| Architecture Lead 1 |  |
| Project Manager |  |
| Requirements Lead |  |
| Architecture Lead 2 |  |
| Cloud Architecture Engineer 2 |  |
| Archictecture Engineer 3 |  |
| Archictecture Engineer 4 |  |
| Security Engineer |  |
| DevOps Engineer 1 |  |
| Developer Lead |  |
| Cloud Architecture Engineer 1 |  |
| Database Architect 1 |  |
| Database Architect 2 |  |
| Archictecture Engineer 2 |  |
| Software Engineer 1 |  |
| Legal |  |
| front-end-dev1 |  |
| front-end-dev2 |  |
| front-end-dev3 |  |
| front-end-dev4 |  |
| back-end-dev1 |  |
| back-end-dev2 |  |
| back-end-dev3 |  |
| back-end-dev4 |  |
| back-end-dev5 |  |
| Tester1 |  |
| Tester2 |  |
| Tester3 |  |
| Tester4 |  |
| Tester5 |  |
| Deploy-eng-4 |  |
| Deploy-eng-1 |  |
| Deploy-eng-2 |  |

## Schedule

| ID | WBS | Task | Duration | Start | Finish | Predecessors | Complete | Remaining | Total slack | Free slack | Resources | Work | Actual work | Cost | Actual cost |
| --- | --- | --- | --- | --- | --- | --- | --- | --- | --- | --- | --- | --- | --- | --- | --- |
| 1 | 1 | **Project Start** | 339d | 2025-03-03 A | 2026-06-17 |  | 10% | 303.94d | 0d |  |  | 15336h | 1771.18h | 372,040 | 103,080 |
| 2 | 1.1 | SOW Signed | 1d | 2025-03-03 | 2025-03-03 |  |  |  | 338d | 0d |  |  |  |  |  |
| 3 | 1.2 | PM Activities | 79d | 2025-03-03 | 2025-06-18 |  |  |  | 260d | 0d | PM | 632h |  | 63,200 |  |
| 4 | 1.3 | **Requirements[Anushka]** | 173d | 2025-03-03 A | 2025-10-28 |  | 99% | 2.22d | 166d | 0d |  | 1808h | 1771.18h | 104,040 | 103,080 |
| 5 | 1.3.1 | **Stakeholder Template** | 22d | 2025-06-19 A | 2025-07-18 A |  | 100% |  |  |  |  | 296h | 296h | 18,800 | 18,800 |
| 6 | 1.3.1.1 | Identify Stakeholders | 5d | 2025-06-19 A | 2025-06-25 A | 2, 3 | 100% |  |  |  | Req eng 1 | 40h | 40h | 2,400 | 2,400 |
| 7 | 1.3.1.2 | Conduct Stakeholder interviews | 5d | 2025-06-26 A | 2025-07-02 A | 6, 2 | 100% |  |  |  | Req eng 1 | 40h | 40h | 2,400 | 2,400 |
| 8 | 1.3.1.3 | Identify and document Stakeholder Objectives | 5d | 2025-07-03 A | 2025-07-09 A | 7 | 100% |  |  |  | Req eng 2 | 40h | 40h | 2,400 | 2,400 |
| 9 | 1.3.1.4 | Create draft Stakeholder Template | 5d | 2025-06-26 A | 2025-07-02 A | 6 | 100% |  |  |  | Req eng 2 | 40h | 40h | 2,400 | 2,400 |
| 10 | 1.3.1.5 | Review draft Stakeholder Template with Leads | 2d | 2025-07-10 A | 2025-07-11 A | 7, 8 | 100% |  |  |  | Arch Lead; Deploy Lead; Dev Lead; Req Lead; Test Lead | 80h | 80h | 6,800 | 6,800 |
| 11 | 1.3.1.6 | Create final Stakeholder Template | 3d | 2025-07-14 A | 2025-07-16 A | 10 | 100% |  |  |  | Req eng 1 | 24h | 24h | 1,440 | 1,440 |
| 12 | 1.3.1.7 | Review with Customer and Signoff | 2d | 2025-07-17 A | 2025-07-18 A | 11 | 100% |  |  |  | Req eng 2; Client | 32h | 32h | 960 | 960 |
| 13 | 1.3.2 | **Req Specification doc** | 173d | 2025-03-03 A | 2025-10-28 |  | 98% | 2.68d | 166d | 0d |  | 1512h | 1475.18h | 85,240 | 84,280 |
| 14 | 1.3.2.1 | **Technical Req** | 173d | 2025-03-03 A | 2025-10-28 |  | 98% | 2.68d | 166d | 0d |  | 1512h | 1475.18h | 85,240 | 84,280 |
| 15 | 1.3.2.1.1 | **Front end** | 146d | 2025-03-03 A | 2025-09-19 |  | 98% | 3.17d | 193d | 0d |  | 1104h | 1067.18h | 60,560 | 59,600 |
| 16 | 1.3.2.1.1.1 | **User Authentication** | 8d | 2025-07-10 A | 2025-07-21 A |  | 100% |  |  |  |  | 128h | 128h | 8,880 | 8,880 |
| 17 | 1.3.2.1.1.1.1 | Create Registration Page | 3d | 2025-07-10 A | 2025-07-14 A | 8 | 100% |  |  |  | Req eng 3 | 24h | 24h | 1,440 | 1,440 |
| 18 | 1.3.2.1.1.1.2 | Create Login Page | 3d | 2025-07-15 A | 2025-07-17 A | 17 | 100% |  |  |  | Req eng 3 | 24h | 24h | 1,440 | 1,440 |
| 19 | 1.3.2.1.1.1.3 | Review with leads | 2d | 2025-07-17 A | 2025-07-18 A | 11 | 100% |  |  |  | Arch Lead; Dev Lead; Deploy Lead; Req Lead | 64h | 64h | 5,520 | 5,520 |
| 20 | 1.3.2.1.1.1.4 | Review with client | 1d | 2025-07-21 A | 2025-07-21 A | 19 | 100% |  |  |  | Req eng 3; Client | 16h | 16h | 480 | 480 |
| 21 | 1.3.2.1.1.2 | **User Profiles** | 117d | 2025-03-03 A | 2025-08-11 |  | 90% | 11.14d | 222d | 0d |  | 248h | 232h | 15,920 | 14,960 |
| 22 | 1.3.2.1.1.2.1 | **Buyers** | 2d | 2025-03-03 | 2025-03-04 |  |  |  | 337d | 0d |  | 16h |  | 960 |  |
| 23 | 1.3.2.1.1.2.1.1 | Create Profiles | 2d | 2025-03-03 | 2025-03-04 |  |  |  | 337d | 0d | Req eng 1 | 16h |  | 960 |  |
| 24 | 1.3.2.1.1.2.2 | Create profile | 2d | 2025-07-22 A | 2025-07-23 A | 20 | 100% |  |  |  | Req eng 3 | 16h | 16h | 960 | 960 |
| 25 | 1.3.2.1.1.2.3 | Track bid | 2d | 2025-07-24 A | 2025-07-25 A | 24 | 100% |  |  |  | Req eng 3 | 16h | 16h | 960 | 960 |

| ID | WBS | Task | Duration | Start | Finish | Predecessors | Complete | Resources | Work | Actual work | Cost | Actual cost |
| --- | --- | --- | --- | --- | --- | --- | --- | --- | --- | --- | --- | --- |
| 26 | 1.3.2.1.1.2.4 | **Sellers** | 13d | 2025-07-24 A | 2025-08-11 A |  | 100% |  | 200h | 200h | 13,040 | 13,040 |
| 27 | 1.3.2.1.1.2.4.1 | List Medical Supplies for auction | 3d | 2025-07-24 A | 2025-07-28 A | 24 | 100% | Req eng 1 | 24h | 24h | 1,440 | 1,440 |
| 28 | 1.3.2.1.1.2.4.2 | Upload Pictures & set starting bids | 4d | 2025-07-29 A | 2025-08-01 A | 27 | 100% | Req eng 1 | 32h | 32h | 1,920 | 1,920 |
| 29 | 1.3.2.1.1.2.4.3 | Define Auction Duration | 4d | 2025-08-04 A | 2025-08-07 A | 28 | 100% | Req eng 1 | 32h | 32h | 1,920 | 1,920 |
| 30 | 1.3.2.1.1.2.4.4 | Review User Auth and Profile with Leads | 2d | 2025-07-24 A | 2025-07-25 A | 18, 24, 17 | 100% | Arch Lead; Deploy Lead; Dev Lead; Req Lead; Test Lead | 80h | 80h | 6,800 | 6,800 |
| 31 | 1.3.2.1.1.2.4.5 | Review / Approval from Customer on Auth and Profile | 2d | 2025-08-08 A | 2025-08-11 A | 30, 27, 28, 29 | 100% | Req eng 1; Client | 32h | 32h | 960 | 960 |
| 32 | 1.3.2.1.1.3 | **Auction Listing & Management** | 10d | 2025-08-08 A | 2025-08-21 A |  | 100% |  | 80h | 80h | 4,800 | 4,800 |
| 33 | 1.3.2.1.1.3.1 | Create auction listings with detailed medical supply descriptions, images, and specifications | 2d | 2025-08-08 A | 2025-08-11 A | 29, 27, 28 | 100% | Req eng 4 | 16h | 16h | 960 | 960 |
| 34 | 1.3.2.1.1.3.2 | Set minimum bid amounts and reserve prices | 2d | 2025-08-12 A | 2025-08-13 A | 33 | 100% | Req eng 4 | 16h | 16h | 960 | 960 |
| 35 | 1.3.2.1.1.3.3 | Automated auction closing upon expiry | 2d | 2025-08-14 A | 2025-08-15 A | 34 | 100% | Req eng 4 | 16h | 16h | 960 | 960 |
| 36 | 1.3.2.1.1.3.4 | Live bid updates, email, and push notifications | 2d | 2025-08-18 A | 2025-08-19 A | 35 | 100% | Req eng 4 | 16h | 16h | 960 | 960 |
| 37 | 1.3.2.1.1.3.5 | Real-Time Bidding System | 2d | 2025-08-20 A | 2025-08-21 A | 36 | 100% | Req eng 4 | 16h | 16h | 960 | 960 |
| 38 | 1.3.2.1.1.4 | Compliance Verification | 2d | 2025-08-22 A | 2025-08-25 A | 37 | 100% | Req eng 4 | 16h | 16h | 960 | 960 |
| 39 | 1.3.2.1.1.5 | **Payment Processing** | 3d | 2025-08-26 A | 2025-08-28 A |  | 100% |  | 24h | 24h | 1,200 | 1,200 |
| 40 | 1.3.2.1.1.5.1 | Secure payment gateway with multiple methods (Credit/Debit, Digital Wallets) | 2d | 2025-08-26 A | 2025-08-27 A | 38 | 100% | Req eng 6 | 16h | 16h | 800 | 800 |
| 41 | 1.3.2.1.1.5.2 | Secure escrow system for transaction protection | 1d | 2025-08-28 A | 2025-08-28 A | 40 | 100% | Req eng 6 | 8h | 8h | 400 | 400 |
| 42 | 1.3.2.1.1.6 | Transaction & Order History | 2d | 2025-08-29 A | 2025-09-01 A | 41 | 100% | Req eng 6 | 16h | 16h | 800 | 800 |
| 43 | 1.3.2.1.1.7 | Rating & Reviews | 2d | 2025-09-02 A | 2025-09-03 A | 42 | 100% | Req eng 6 | 16h | 16h | 800 | 800 |
| 44 | 1.3.2.1.1.8 | **Review Auction listing & Payment with Leads** | 2d | 2025-09-04 A | 2025-09-05 A | 40, 41, 42, 43 | 100% | Arch Lead; Deploy Lead; Dev Lead; Req Lead; Test Lead | 112h | 91.18h | 7,600 | 7,600 |
| 45 | 1.3.2.1.1.8.1 | Review / Approval of Auction listing & Payment with Customer | 2d | 2025-09-04 A | 2025-09-05 A |  | 100% | Req eng 6; Client | 32h | 32h | 800 | 800 |
| 46 | 1.3.2.1.1.9 | **Admin Dashboard** | 8d | 2025-09-04 A | 2025-09-15 A |  | 100% |  | 64h | 64h |  |  |
| 47 | 1.3.2.1.1.9.1 | Fraud detection and user verification features | 5d | 2025-09-04 A | 2025-09-10 A | 43 | 100% | Req eng 8 | 40h | 40h |  |  |
| 48 | 1.3.2.1.1.9.2 | Manage user accounts, auction listings, transaction repo | 3d | 2025-09-11 A | 2025-09-15 A | 47 | 100% | Req eng 8 | 24h | 24h |  |  |
| 49 | 1.3.2.1.1.10 | **Backend Req** | 31d | 2025-08-08 A | 2025-09-19 A |  | 100% |  | 400h | 400h | 19,600 | 19,600 |
| 50 | 1.3.2.1.1.10.1 | **Authentication & Authorization** | 31d | 2025-08-08 A | 2025-09-19 A |  | 100% |  | 400h | 400h | 19,600 | 19,600 |
| 51 | 1.3.2.1.1.10.1.1 | Secure user authentication | 2d | 2025-08-08 A | 2025-08-11 A | 27, 29 | 100% | Req eng 7 | 16h | 16h | 800 | 800 |
| 52 | 1.3.2.1.1.10.1.2 | Role-based access control (Admin, Buyer, Seller) | 2d | 2025-08-12 A | 2025-08-13 A | 51 | 100% | Req eng 7 | 16h | 16h | 800 | 800 |

| ID | WBS | Task | Duration | Start | Finish | Predecessors | Complete | Resources | Work | Actual work | Cost | Actual cost |
| --- | --- | --- | --- | --- | --- | --- | --- | --- | --- | --- | --- | --- |
| 53 | 1.3.2.1.1.10.1.3 | **Database Management** | 27d | 2025-08-14 A | 2025-09-19 A |  | 100% |  | 368h | 368h | 18,000 | 18,000 |
| 54 | 1.3.2.1.1.10.1.3.1 | Relational database to store user profiles, auction listings, bids, transactions, and reviews | 6d | 2025-08-14 A | 2025-08-21 A | 52 | 100% | Req eng 8 | 48h | 48h |  |  |
| 55 | 1.3.2.1.1.10.1.3.2 | Ensure data integrity and normalization | 4d | 2025-08-22 A | 2025-08-27 A | 54 | 100% | Req eng 8 | 32h | 32h |  |  |
| 56 | 1.3.2.1.1.10.1.3.3 | **Auction Management System** | 17d | 2025-08-28 A | 2025-09-19 A |  | 100% |  | 288h | 288h | 18,000 | 18,000 |
| 57 | 1.3.2.1.1.10.1.3.3.1 | CRUD operations for auction listings | 3d | 2025-08-28 A | 2025-09-01 A | 55 | 100% | Req eng 3 | 24h | 24h | 1,440 | 1,440 |
| 58 | 1.3.2.1.1.10.1.3.3.2 | Automated auction expiration and winner selection | 4d | 2025-09-02 A | 2025-09-05 A | 57 | 100% | Req eng 3 | 32h | 32h | 1,920 | 1,920 |
| 59 | 1.3.2.1.1.10.1.3.3.3 | Get signoff from Leads on the technical requirements | 2d | 2025-09-08 A | 2025-09-09 A | 58 | 100% | Arch Lead; Deploy Lead; Dev Lead; Req Lead; Test Lead | 80h | 80h | 6,800 | 6,800 |
| 60 | 1.3.2.1.1.10.1.3.3.4 | **Admin Panel Features** | 7d | 2025-09-10 A | 2025-09-18 A |  | 100% |  | 104h | 104h | 6,400 | 6,400 |
| 61 | 1.3.2.1.1.10.1.3.3.4.1 | Dashboard for monitoring user activity | 2d | 2025-09-10 A | 2025-09-11 A | 59 | 100% | Req eng 4 | 16h | 16h | 960 | 960 |
| 62 | 1.3.2.1.1.10.1.3.3.4.2 | Fraud detection and account suspension mechanisms | 3d | 2025-09-12 A | 2025-09-16 A | 61 | 100% | Req eng 4 | 24h | 24h | 1,440 | 1,440 |
| 63 | 1.3.2.1.1.10.1.3.3.4.3 | Review with leads | 2d | 2025-09-17 A | 2025-09-18 A | 62 | 100% | Arch Lead; Req Lead; Developer Lead; Test Lead | 64h | 64h | 4,000 | 4,000 |
| 64 | 1.3.2.1.1.10.1.3.3.5 | Review technical Req doc with Client and get signoff | 3d | 2025-09-17 A | 2025-09-19 A | 62 | 100% | Client; Req eng 4 | 48h | 48h | 1,440 | 1,440 |
| 65 | 1.3.2.1.2 | **Wireframes** | 37d | 2025-09-08 A | 2025-10-28 A |  | 100% |  | 408h | 408h | 24,680 | 24,680 |
| 66 | 1.3.2.1.2.1 | Auction Listing Page | 3d | 2025-09-08 A | 2025-09-10 A | 45 | 100% | Req eng 2 | 24h | 24h | 1,440 | 1,440 |
| 67 | 1.3.2.1.2.2 | Auction Details Page | 3d | 2025-09-11 A | 2025-09-15 A | 66 | 100% | Req eng 3 | 24h | 24h | 1,440 | 1,440 |
| 68 | 1.3.2.1.2.3 | Auction Registration Page | 3d | 2025-09-16 A | 2025-09-18 A | 67, 31 | 100% | Req eng 5 | 24h | 24h | 1,200 | 1,200 |
| 69 | 1.3.2.1.2.4 | Bid Management Page | 3d | 2025-09-19 A | 2025-09-23 A | 68 | 100% | Req eng 1 | 24h | 24h | 1,440 | 1,440 |
| 70 | 1.3.2.1.2.5 | Supplier Verification page | 3d | 2025-09-24 A | 2025-09-26 A | 69 | 100% | Req eng 4 | 24h | 24h | 1,440 | 1,440 |
| 71 | 1.3.2.1.2.6 | Transaction & Order History Page | 3d | 2025-09-29 A | 2025-10-01 A | 70 | 100% | Req eng 6 | 24h | 24h | 1,200 | 1,200 |
| 72 | 1.3.2.1.2.7 | Notification & Alerts Page | 3d | 2025-10-02 A | 2025-10-06 A | 71 | 100% | Req eng 7 | 24h | 24h | 1,200 | 1,200 |
| 73 | 1.3.2.1.2.8 | Review Wireframes with Leads | 1d | 2025-10-07 A | 2025-10-07 A | 72 | 100% | Test Lead; Arch Lead; Deploy Lead; Dev Lead | 32h | 32h | 2,760 | 2,760 |
| 74 | 1.3.2.1.2.9 | Update Wireframes | 2d | 2025-10-08 A | 2025-10-09 A | 73 | 100% | Req eng 8 | 16h | 16h |  |  |
| 75 | 1.3.2.1.2.10 | Review Wireframes with client and get signoff | 1d | 2025-10-10 A | 2025-10-10 A | 74 | 100% | Req Lead; Client | 16h | 16h | 640 | 640 |
| 76 | 1.3.2.1.2.11 | **App Map** | 12d | 2025-10-13 A | 2025-10-28 A |  | 100% |  | 176h | 176h | 11,920 | 11,920 |
| 77 | 1.3.2.1.2.11.1 | Review exisiting dashboard applications | 2d | 2025-10-13 A | 2025-10-14 A | 75 | 100% | Req eng 3 | 16h | 16h | 960 | 960 |
| 78 | 1.3.2.1.2.11.2 | Identify User Roles and Navigation Paths | 2d | 2025-10-15 A | 2025-10-16 A | 77 | 100% | Req eng 3 | 16h | 16h | 960 | 960 |
| 79 | 1.3.2.1.2.11.3 | Document Integration Points | 2d | 2025-10-17 A | 2025-10-20 A | 78 | 100% | Req eng 6 | 16h | 16h | 800 | 800 |
| 80 | 1.3.2.1.2.11.4 | Create a Draft App Map | 2d | 2025-10-21 A | 2025-10-22 A | 79 | 100% | Req eng 6 | 16h | 16h | 800 | 800 |
| 81 | 1.3.2.1.2.11.5 | Review Draft App Map with leads | 2d | 2025-10-23 A | 2025-10-24 A | 80 | 100% | Arch Lead; Dev Lead; Deploy Lead; Req Lead; Test Lead | 80h | 80h | 6,800 | 6,800 |
| 82 | 1.3.2.1.2.11.6 | Update App Map and create final App Map | 2d | 2025-10-27 A | 2025-10-28 A | 81 | 100% | Req eng 6; Req eng 7 | 32h | 32h | 1,600 | 1,600 |

| ID | WBS | Task | Duration | Start | Finish | Total slack | Free slack | Resources | Work |
| --- | --- | --- | --- | --- | --- | --- | --- | --- | --- |
| 83 | 1.4 | **Architecture** | 7d | 2025-03-03 | 2025-03-11 | 226d | 0d |  | 2144h |
| 84 | 1.4.1 | **Architecture Planning and Designing Systems** | 5d | 2025-03-03 | 2025-03-07 | 334d | 0d |  | 584h |
| 85 | 1.4.1.1 | **Reviewing Requirements and Planning Architecture** | 5d | 2025-03-03 | 2025-03-07 | 334d | 0d |  | 72h |
| 86 | 1.4.1.1.1 | Review Requirements | 3d | 2025-03-03 | 2025-03-05 | 336d | 0d | Architecture Lead 1; Project Manager; Requirements Lead | 72h |
| 87 | 1.4.1.1.2 | Discuss Architectural Components | 2d | 2025-03-03 | 2025-03-04 | 337d | 0d |  |  |
| 88 | 1.4.1.1.3 | Assess and Select Tech Stack | 2d | 2025-03-03 | 2025-03-04 | 337d | 0d |  |  |
| 89 | 1.4.1.1.4 | Assessing security and regulatory requirements | 2d | 2025-03-03 | 2025-03-04 | 337d | 0d |  |  |
| 90 | 1.4.1.1.5 | Architectural Diagrams | 5d | 2025-03-03 | 2025-03-07 | 334d | 0d |  |  |
| 91 | 1.4.1.1.6 | Review Final Document with Leads | 2d | 2025-03-03 | 2025-03-04 | 337d | 0d |  |  |
| 92 | 1.4.1.1.7 | Review Final Document with Customers and get Signed | 2d | 2025-03-03 | 2025-03-04 | 337d | 0d |  |  |
| 93 | 1.4.1.2 | **Cloud Infrastructure and Environment Architecture** | 5d | 2025-03-03 | 2025-03-07 | 334d | 0d |  | 512h |
| 94 | 1.4.1.2.1 | Assess and decide on Hosting Provider | 3d | 2025-03-03 | 2025-03-05 | 336d | 0d | Project Manager; Architecture Lead 2; Cloud Architecture Engineer 2 | 72h |
| 95 | 1.4.1.2.2 | Configure Cloud Solution | 5d | 2025-03-03 | 2025-03-07 | 334d | 0d | Archictecture Engineer 3; Cloud Architecture Engineer 2 | 80h |
| 96 | 1.4.1.2.3 | Configure Security and Networking Solution | 2d | 2025-03-03 | 2025-03-04 | 337d | 0d | Archictecture Engineer 3; Archictecture Engineer 4; Security Engineer | 48h |
| 97 | 1.4.1.2.4 | Create CI/CD pipeline | 2d | 2025-03-03 | 2025-03-04 | 337d | 0d | Architecture Lead 1; Archictecture Engineer 3; Archictecture Engineer 4 | 48h |
| 98 | 1.4.1.2.5 | Set up staging and development environments | 4d | 2025-03-03 | 2025-03-06 | 335d | 0d | Archictecture Engineer 4; DevOps Engineer 1 | 64h |
| 99 | 1.4.1.2.6 | Develop Deployment Architecture | 3d | 2025-03-03 | 2025-03-05 | 336d | 0d | Architecture Lead 1; Archictecture Engineer 3; Archictecture Engineer 4; Developer Lead; Architecture Lead 2; Security Engineer; Cloud Architecture Engineer 1 | 168h |
| 100 | 1.4.1.2.7 | Test Environments | 2d | 2025-03-03 | 2025-03-04 | 337d | 0d | Archictecture Engineer 3; Cloud Architecture Engineer 2 | 32h |
| 101 | 1.4.2 | **Data Managment Architecture** | 4d | 2025-03-03 | 2025-03-06 | 335d | 0d |  | 320h |
| 102 | 1.4.2.1 | Review Database Requirements | 1d | 2025-03-03 | 2025-03-03 | 338d | 0d | Architecture Lead 1; Cloud Architecture Engineer 1; Database Architect 1; Database Architect 2 | 32h |
| 103 | 1.4.2.2 | Design Data Models | 4d | 2025-03-03 | 2025-03-06 | 335d | 0d |  |  |
| 104 | 1.4.2.3 | Design Database Schema | 4d | 2025-03-03 | 2025-03-06 | 335d | 0d | Archictecture Engineer 2; Database Architect 2 | 64h |
| 105 | 1.4.2.4 | Assess and Choose Database Stack | 2d | 2025-03-03 | 2025-03-04 | 337d | 0d | Architecture Lead 2; Database Architect 2 | 32h |
| 106 | 1.4.2.5 | Develop Data Security and Recovery Protocols | 4d | 2025-03-03 | 2025-03-06 | 335d | 0d | Security Engineer; Cloud Architecture Engineer 1; Database Architect 1 | 96h |
| 107 | 1.4.2.6 | Review Database Architecture | 2d | 2025-03-03 | 2025-03-04 | 337d | 0d | Archictecture Engineer 3; Archictecture Engineer 4 | 32h |
| 108 | 1.4.2.7 | Review Review Database Architecture with Leads | 2d | 2025-03-03 | 2025-03-04 | 337d | 0d | Architecture Lead 1; Project Manager; Security Engineer; Cloud Architecture Engineer 1 | 64h |

| ID | WBS | Task | Duration | Start | Finish | Total slack | Free slack | Resources | Work |
| --- | --- | --- | --- | --- | --- | --- | --- | --- | --- |
| 109 | 1.4.3 | **API and Microservices Architecture** | 6d | 2025-03-03 | 2025-03-10 | 234d | 0d |  | 176h |
| 110 | 1.4.3.1 | Review API and Microservice Requirements | 2d | 2025-03-03 | 2025-03-04 | 337d | 0d | Architecture Lead 1; Project Manager; Developer Lead | 48h |
| 111 | 1.4.3.2 | Create API Architecture | 4d | 2025-03-03 | 2025-03-06 | 234d | 0d |  |  |
| 112 | 1.4.3.3 | Create API Security and Authentication Models | 4d | 2025-03-03 | 2025-03-06 | 331d | 0d | Archictecture Engineer 2; Security Engineer; Software Engineer 1 | 96h |
| 113 | 1.4.3.4 | Develop High Level Component Diagrams | 2d | 2025-03-03 | 2025-03-04 | 337d | 0d | Archictecture Engineer 2; Software Engineer 1 | 32h |
| 114 | 1.4.3.5 | Develop System Failure Recovery Strategy | 6d | 2025-03-03 | 2025-03-10 | 293d | 0d |  |  |
| 115 | 1.4.3.6 | Define Load Balancing Architecture | 2d | 2025-03-03 | 2025-03-04 | 337d | 0d |  |  |
| 116 | 1.4.3.7 | Review API and Microservices Architecture with Leads | 2d | 2025-03-03 | 2025-03-04 | 337d | 0d |  |  |
| 117 | 1.4.4 | **Federal Compliance Architecture** | 7d | 2025-03-03 | 2025-03-11 | 282d | 0d |  | 664h |
| 118 | 1.4.4.1 | Review Federal and Medical Compliance Requirements (HIPPA, FDA) | 3d | 2025-03-03 | 2025-03-05 | 306d | 0d | Architecture Lead 1; Developer Lead | 48h |
| 119 | 1.4.4.2 | Define Audit Control Architecture | 2d | 2025-03-03 | 2025-03-04 | 307d | 0d |  |  |
| 120 | 1.4.4.3 | Create regulatory logging and report Architecture | 4d | 2025-03-03 | 2025-03-06 | 282d | 0d | Archictecture Engineer 3; Archictecture Engineer 4 | 64h |
| 121 | 1.4.4.4 | Define User authentication and audit tool controls | 4d | 2025-03-03 | 2025-03-06 | 305d | 0d | Architecture Lead 1; Archictecture Engineer 3; Archictecture Engineer 4; Architecture Lead 2 | 128h |
| 122 | 1.4.4.5 | Review Data Handling and Audit Architecture for PHI compliance | 2d | 2025-03-03 | 2025-03-04 | 307d | 0d | Archictecture Engineer 3; Archictecture Engineer 4 | 32h |
| 123 | 1.4.4.6 | Develop Incident Report Architecture | 4d | 2025-03-03 | 2025-03-06 | 305d | 0d | Architecture Lead 1; Archictecture Engineer 3; Archictecture Engineer 4; Developer Lead; Architecture Lead 2; Security Engineer; Cloud Architecture Engineer 1 | 224h |
| 124 | 1.4.4.7 | Verify Compliance Architecture | 7d | 2025-03-03 | 2025-03-11 | 302d | 0d | Architecture Lead 1; Architecture Lead 2; Legal | 168h |
| 125 | 1.4.5 | **Architecture Review** | 4d | 2025-03-03 | 2025-03-06 | 226d | 0d |  | 400h |
| 126 | 1.4.5.1 | Evaluate Architectural Design | 4d | 2025-03-03 | 2025-03-06 | 234d | 0d | Architecture Lead 2; DevOps Engineer 1; Cloud Architecture Engineer 1; Database Architect 1; Software Engineer 1 | 160h |
| 127 | 1.4.5.2 | Analyze Preformance and Scalability | 2d | 2025-03-03 | 2025-03-04 | 332d | 0d | Architecture Lead 1; Project Manager | 32h |
| 128 | 1.4.5.3 | Review Architecture Models | 2d | 2025-03-03 | 2025-03-04 | 332d | 0d | Project Manager; Architecture Lead 2 | 32h |
| 129 | 1.4.5.4 | Review Data Architecture | 2d | 2025-03-03 | 2025-03-04 | 334d | 0d | Architecture Lead 1; Project Manager | 32h |
| 130 | 1.4.5.5 | Review Deployment Architecture | 2d | 2025-03-03 | 2025-03-04 | 330d | 0d | Project Manager; Architecture Lead 2 | 32h |
| 131 | 1.4.5.6 | Review API and Microservices Architecture | 2d | 2025-03-03 | 2025-03-04 | 337d | 0d |  |  |
| 132 | 1.4.5.7 | Finalize Architecture and Assess Possible Improvements | 2d | 2025-03-03 | 2025-03-04 | 337d | 0d | Architecture Lead 1; Project Manager; Architecture Lead 2 | 48h |
| 133 | 1.4.5.8 | Review Architecture with Development Lead | 2d | 2025-03-03 | 2025-03-04 | 226d | 0d | Architecture Lead 1; Project Manager; Developer Lead; Architecture Lead 2 | 64h |

| ID | WBS | Task | Duration | Start | Finish | Predecessors | Total slack | Free slack | Resources | Work |
| --- | --- | --- | --- | --- | --- | --- | --- | --- | --- | --- |
| 134 | 1.5 | **Coding[Kailong Duan]** | 332d | 2025-03-03 | 2026-06-08 |  | 7d | 0d |  | 5152h |
| 135 | 1.5.1 | **Front-end** | 195d | 2025-03-03 | 2025-11-27 |  | 124d | 0d |  | 1064h |
| 136 | 1.5.1.1 | **UI design** | 8d | 2025-03-03 | 2025-03-12 |  | 224d | 0d |  | 224h |
| 137 | 1.5.1.1.1 | Rating& Reviews UI | 3d | 2025-03-03 | 2025-03-05 |  | 299d | 0d | front-end-dev1 | 24h |
| 138 | 1.5.1.1.2 | User Authentication UI | 5d | 2025-03-03 | 2025-03-07 |  | 309d | 0d | front-end-dev2 | 40h |
| 139 | 1.5.1.1.3 | CRUD auction Medical UI | 5d | 2025-03-03 | 2025-03-07 |  | 309d | 0d | front-end-dev2 | 40h |
| 140 | 1.5.1.1.4 | User Profiles UI | 5d | 2025-03-03 | 2025-03-07 |  | 309d | 0d | front-end-dev3 | 40h |
| 141 | 1.5.1.1.5 | Admin Dashboard UI | 5d | 2025-03-06 | 2025-03-12 | 137 | 299d | 0d | front-end-dev3 | 40h |
| 142 | 1.5.1.1.6 | User feedback UI | 5d | 2025-03-03 | 2025-03-07 |  | 224d | 0d | front-end-dev4 | 40h |
| 143 | 1.5.1.2 | **development** | 193d | 2025-03-05 | 2025-11-27 | 133 | 124d | 0d |  | 840h |
| 144 | 1.5.1.2.1 | **User Profiles** | 7d | 2025-03-05 | 2025-03-13 |  | 224d | 0d |  | 56h |
| 145 | 1.5.1.2.1.1 | User Login, Register | 3d | 2025-03-05 | 2025-03-07 |  | 228d | 0d | front-end-dev1 | 24h |
| 146 | 1.5.1.2.1.2 | Review / Verification | 4d | 2025-03-10 | 2025-03-13 | 142 | 224d | 0d | front-end-dev1 | 32h |
| 147 | 1.5.1.2.2 | **Medical Supplies Auction Settings** | 12d | 2025-03-05 | 2025-03-20 |  | 224d | 0d |  | 200h |
| 148 | 1.5.1.2.2.1 | Medical Function List | 5d | 2025-03-05 | 2025-03-11 |  | 226d | 0d | front-end-dev2 | 40h |
| 149 | 1.5.1.2.2.2 | Image Upload | 5d | 2025-03-10 | 2025-03-14 | 145 | 228d | 0d | front-end-dev2 | 40h |
| 150 | 1.5.1.2.2.3 | Medical Price Settings | 5d | 2025-03-14 | 2025-03-20 | 146 | 224d | 0d | front-end-dev2 | 40h |
| 151 | 1.5.1.2.2.4 | Auction Time Settings | 5d | 2025-03-05 | 2025-03-11 |  | 231d | 0d | front-end-dev2 | 40h |
| 152 | 1.5.1.2.2.5 | Medical Supplies Detailed Description | 5d | 2025-03-12 | 2025-03-18 | 148 | 226d | 0d | front-end-dev2 | 40h |
| 153 | 1.5.1.2.3 | **Auction User Feedback** | 10d | 2025-10-29 | 2025-11-11 | 82 | 124d | 0d |  | 200h |
| 154 | 1.5.1.2.3.1 | Rating | 5d | 2025-10-29 | 2025-11-04 |  | 124d | 0d | front-end-dev4 | 40h |
| 155 | 1.5.1.2.3.2 | Customer Support | 5d | 2025-10-29 | 2025-11-04 | 151 | 141d | 0d | front-end-dev4 | 40h |
| 156 | 1.5.1.2.3.3 | Complaint Resolution | 5d | 2025-10-29 | 2025-11-04 | 152 | 141d | 0d | front-end-dev4 | 40h |
| 157 | 1.5.1.2.3.4 | Dispute Resolution | 5d | 2025-10-29 | 2025-11-04 |  | 129d | 0d | front-end-dev4 | 40h |
| 158 | 1.5.1.2.3.5 | User comment | 5d | 2025-11-05 | 2025-11-11 | 154 | 124d | 0d | front-end-dev4 | 40h |

| ID | WBS | Task | Duration | Start | Finish | Predecessors | Total slack | Free slack | Constraint | Resources | Work |
| --- | --- | --- | --- | --- | --- | --- | --- | --- | --- | --- | --- |
| 159 | 1.5.1.2.4 | **Admin Dashboard** | 187d | 2025-03-13 | 2025-11-27 | 141 | 124d | 0d |  |  | 384h |
| 160 | 1.5.1.2.4.1 | User Account Management | 12d | 2025-03-13 | 2025-03-28 |  | 299d | 0d |  | front-end-dev3 | 96h |
| 161 | 1.5.1.2.4.2 | Medical Supplies Approval | 12d | 2025-11-05 | 2025-11-20 | 157 | 129d | 0d |  | front-end-dev3 | 96h |
| 162 | 1.5.1.2.4.3 | Generate Medical Supplies Quality | 12d | 2025-11-12 | 2025-11-27 | 158 | 124d | 0d |  | front-end-dev3 | 96h |
| 163 | 1.5.1.2.4.4 | Transaction Approval | 12d | 2025-03-13 | 2025-03-28 |  | 299d | 0d |  | front-end-dev3 | 96h |
| 164 | 1.5.2 | **Back-end** | 252d | 2025-06-20 | 2026-06-08 |  | 7d | 0d |  |  | 4088h |
| 165 | 1.5.2.1 | **Database Design​** | 44d | 2025-06-20 | 2025-08-20 |  | 215d | 0d |  |  | 528h |
| 166 | 1.5.2.1.1 | Medical Supplies, schema | 4d | 2025-06-20 | 2025-06-25 |  | 255d | 0d | finish no earlier than 2025-06-25 | back-end-dev1 | 32h |
| 167 | 1.5.2.1.2 | Rating& Reviews, schema | 4d | 2025-06-26 | 2025-07-01 | 112 | 251d | 0d | finish no earlier than 2025-07-01 | back-end-dev1 | 32h |
| 168 | 1.5.2.1.3 | User, Medical Supplies schema | 4d | 2025-06-20 | 2025-06-25 |  | 255d | 0d | finish no earlier than 2025-06-25 | back-end-dev2 | 32h |
| 169 | 1.5.2.1.4 | Develop CRUD operations​ | 40d | 2025-06-26 | 2025-08-20 | 114 | 215d | 0d | finish no earlier than 2025-08-20 | back-end-dev2 | 320h |
| 170 | 1.5.2.1.5 | Database Ready | 14d | 2025-06-20 | 2025-07-09 |  | 245d | 0d | finish no earlier than 2025-07-09 | back-end-dev3 | 112h |
| 171 | 1.5.2.2 | **Real-Time Bidding System** | 62d | 2025-08-21 | 2025-11-14 | 111 | 153d | 0d |  |  | 1760h |
| 172 | 1.5.2.2.1 | Auction medical management | 15d | 2025-08-21 | 2025-09-10 |  | 200d | 0d | finish no earlier than 2025-09-10 | back-end-dev3; back-end-dev4 | 240h |
| 173 | 1.5.2.2.2 | Auction Status Tracking | 12d | 2025-09-11 | 2025-09-26 | 118 | 188d | 0d | finish no earlier than 2025-09-26 | back-end-dev3; back-end-dev4 | 192h |
| 174 | 1.5.2.2.3 | Real-Time Bidding Data | 14d | 2025-09-29 | 2025-10-16 | 119 | 174d | 0d | finish no earlier than 2025-10-16 | back-end-dev3; back-end-dev4 | 224h |
| 175 | 1.5.2.2.4 | Automatic Price Update | 15d | 2025-10-17 | 2025-11-06 | 120 | 121d | 0d | finish no earlier than 2025-11-06 | back-end-dev3; back-end-dev4 | 240h |
| 176 | 1.5.2.2.5 | email notification | 6d | 2025-11-07 | 2025-11-14 | 121 | 153d | 0d | finish no earlier than 2025-11-14 | back-end-dev3; back-end-dev4 | 96h |
| 177 | 1.5.2.2.6 | Historical Bidding Records | 15d | 2025-08-21 | 2025-09-10 |  | 200d | 0d | finish no earlier than 2025-09-10 | back-end-dev1; back-end-dev2 | 240h |
| 178 | 1.5.2.2.7 | Anti-Fraud Measures | 16d | 2025-09-11 | 2025-10-02 | 123 | 184d | 0d | finish no earlier than 2025-10-02 | back-end-dev1; back-end-dev2 | 256h |
| 179 | 1.5.2.2.8 | Proxy Bidding | 17d | 2025-10-03 | 2025-10-27 | 124 | 167d | 0d | finish no earlier than 2025-10-27 | back-end-dev1; back-end-dev2 | 272h |
| 180 | 1.5.2.3 | **Payment** | 25d | 2025-11-17 | 2025-12-19 | 111, 117 | 128d | 0d |  |  | 200h |
| 181 | 1.5.2.3.1 | PayPal support | 5d | 2025-11-17 | 2025-11-21 |  | 148d | 0d | finish no earlier than 2025-11-21 | back-end-dev2 | 40h |
| 182 | 1.5.2.3.2 | Payment Gateway Integration | 5d | 2025-11-24 | 2025-11-28 | 127 | 143d | 0d | finish no earlier than 2025-11-28 | back-end-dev2 | 40h |
| 183 | 1.5.2.3.3 | Payment Confirmation | 5d | 2025-12-01 | 2025-12-05 | 128 | 138d | 0d | finish no earlier than 2025-12-05 | back-end-dev2 | 40h |
| 184 | 1.5.2.3.4 | Payment History | 3d | 2025-12-08 | 2025-12-10 | 129 | 135d | 0d | finish no earlier than 2025-12-10 | back-end-dev2 | 24h |
| 185 | 1.5.2.3.5 | Payment Status Tracking | 7d | 2025-12-11 | 2025-12-19 | 130 | 128d | 0d | finish no earlier than 2025-12-19 | back-end-dev2 | 56h |

| ID | WBS | Task | Duration | Start | Finish | Predecessors | Total slack | Free slack | Constraint | Resources | Work | Cost |
| --- | --- | --- | --- | --- | --- | --- | --- | --- | --- | --- | --- | --- |
| 186 | 1.5.2.4 | **AI-based Bidding Algorithms** | 146d | 2025-11-17 | 2026-06-08 | 117 | 7d | 0d |  |  | 1168h |  |
| 187 | 1.5.2.4.1 | Model selection | 4d | 2025-11-17 | 2025-11-20 |  | 149d | 0d | finish no earlier than 2025-11-20 | back-end-dev5 | 32h |  |
| 188 | 1.5.2.4.2 | Data collection | 30d | 2025-11-21 | 2026-01-01 | 133 | 119d | 0d | finish no earlier than 2026-01-01 | back-end-dev5 | 240h |  |
| 189 | 1.5.2.4.3 | Data preprocessing | 12d | 2026-01-02 | 2026-01-19 |  | 107d | 0d | finish no earlier than 2026-01-19 | back-end-dev5 | 96h |  |
| 190 | 1.5.2.4.4 | Reinforcement learning | 20d | 2026-01-20 | 2026-02-16 | 135 | 87d | 0d | finish no earlier than 2026-02-16 | back-end-dev5 | 160h |  |
| 191 | 1.5.2.4.5 | Objective function | 25d | 2026-02-17 | 2026-03-23 | 136 | 62d | 0d | finish no earlier than 2026-03-23 | back-end-dev5 | 200h |  |
| 192 | 1.5.2.4.6 | User characteristics | 21d | 2026-03-24 | 2026-04-21 | 137 | 41d | 0d | finish no earlier than 2026-04-21 | back-end-dev5 | 168h |  |
| 193 | 1.5.2.4.7 | Predict user behavior | 12d | 2026-04-22 | 2026-05-07 | 138 | 29d | 0d | finish no earlier than 2026-05-07 | back-end-dev5 | 96h |  |
| 194 | 1.5.2.4.8 | Optimize the bidding strategy | 20d | 2026-05-08 | 2026-06-04 | 139 | 9d | 0d | finish no earlier than 2026-06-04 | back-end-dev5 | 160h |  |
| 195 | 1.5.2.4.9 | Model evaluation | 2d | 2026-06-05 | 2026-06-08 | 140 | 7d | 0d | finish no earlier than 2026-06-08 | back-end-dev5 | 16h |  |
| 196 | 1.5.2.5 | **Security Measures** | 32d | 2025-12-22 | 2026-02-03 | 111, 126 | 27d | 0d |  |  | 432h |  |
| 197 | 1.5.2.5.1 | Anti-Cheating System | 12d | 2025-12-22 | 2026-01-06 |  | 116d | 0d | finish no earlier than 2026-01-06 | back-end-dev3 | 96h |  |
| 198 | 1.5.2.5.2 | Rate Limiting | 5d | 2026-01-07 | 2026-01-13 | 143 | 111d | 0d | finish no earlier than 2026-01-13 | back-end-dev3 | 40h |  |
| 199 | 1.5.2.5.3 | Blacklist and User Restrictions | 5d | 2026-01-14 | 2026-01-20 | 144 | 106d | 0d | finish no earlier than 2026-01-20 | back-end-dev3 | 40h |  |
| 200 | 1.5.2.5.4 | Behavioral Analysis | 5d | 2025-12-22 | 2025-12-26 |  | 123d | 0d | finish no earlier than 2025-12-26 | back-end-dev4 | 40h |  |
| 201 | 1.5.2.5.5 | Manual Review System | 5d | 2026-01-21 | 2026-01-27 | 145 | 101d | 0d | finish no earlier than 2026-01-27 | back-end-dev4 | 40h |  |
| 202 | 1.5.2.5.6 | Bot Detection | 5d | 2025-12-29 | 2026-01-02 | 146 | 118d | 0d | finish no earlier than 2026-01-02 | back-end-dev4 | 40h |  |
| 203 | 1.5.2.5.7 | IP and Device Tracking | 5d | 2026-01-28 | 2026-02-03 | 147 | 0d |  | finish no earlier than 2026-02-03 | back-end-dev4 | 40h |  |
| 204 | 1.5.2.5.8 | Add HTTPS Encryption for Payment APIs | 12d | 2026-01-05 | 2026-01-20 | 148 | 85d | 0d | finish no earlier than 2026-01-20 | back-end-dev4 | 96h |  |
| 205 | 1.6 | **Tesing[Kailong Duan]** | 339d | 2025-03-03 | 2026-06-17 |  | 0d |  |  |  | 5600h | 204,800 |
| 206 | 1.6.1 | **Testing Plan** | 236d | 2025-03-03 | 2026-01-23 |  | 103d | 0d |  |  | 120h |  |
| 207 | 1.6.1.1 | Determine Test Objects | 4d | 2025-03-03 | 2025-03-06 |  | 335d | 0d |  | Tester1 | 32h |  |
| 208 | 1.6.1.2 | Define Test Scope | 3d | 2026-01-21 | 2026-01-23 | 204 | 85d | 0d |  | Tester1 | 24h |  |
| 209 | 1.6.1.3 | Resource Preparation | 3d | 2025-03-03 | 2025-03-05 |  | 257d | 0d |  | Tester1 | 24h |  |
| 210 | 1.6.1.4 | Identification Risk and mitigation | 5d | 2025-03-03 | 2025-03-07 |  | 329d | 0d |  | Tester1 | 40h |  |

| ID | WBS | Task | Duration | Start | Finish | Predecessors | Total slack | Free slack | Resources | Work |
| --- | --- | --- | --- | --- | --- | --- | --- | --- | --- | --- |
| 211 | 1.6.2 | **UAT testing** | 47d | 2026-02-04 | 2026-04-09 | 203 | 0d |  |  | 880h |
| 212 | 1.6.2.1 | **front-end tesing** | 5d | 2026-02-04 | 2026-02-10 |  | 0d |  |  | 160h |
| 213 | 1.6.2.1.1 | Auction User Authentication | 5d | 2026-02-04 | 2026-02-10 |  | 91d | 0d | Tester2 | 40h |
| 214 | 1.6.2.1.2 | Auction registration, login | 5d | 2026-02-04 | 2026-02-10 | 210 | 91d | 0d | Tester2 | 40h |
| 215 | 1.6.2.1.3 | Auction payment testing | 5d | 2026-02-04 | 2026-02-10 |  | 0d |  | Tester2 | 40h |
| 216 | 1.6.2.1.4 | test items webpage | 5d | 2026-02-04 | 2026-02-10 |  | 79d | 0d | Tester2 | 40h |
| 217 | 1.6.2.2 | **back-end tesing** | 47d | 2026-02-04 | 2026-04-09 | 203 | 5d | 0d |  | 720h |
| 218 | 1.6.2.2.1 | User Management Service | 12d | 2026-02-04 | 2026-02-19 |  | 65d | 0d | Tester3 | 96h |
| 219 | 1.6.2.2.2 | Medical Supplies Product Review and Verification Service. | 12d | 2026-02-11 | 2026-02-26 | 215 | 0d |  | Tester3 | 96h |
| 220 | 1.6.2.2.3 | Real-Time Bidding System Service. | 12d | 2026-02-11 | 2026-02-26 | 216 | 79d | 0d | Tester3 | 96h |
| 221 | 1.6.2.2.4 | Medical Supplies Online Service. | 12d | 2026-02-04 | 2026-02-19 |  | 28d | 0d | Tester3 | 96h |
| 222 | 1.6.2.2.5 | Feedback and Rating Service. | 12d | 2026-02-20 | 2026-03-09 | 218 | 65d | 0d | Tester3 | 96h |
| 223 | 1.6.2.2.6 | API Integration | 30d | 2026-02-27 | 2026-04-09 | 209, 219 | 0d |  | Tester3 | 240h |
| 224 | 1.6.3 | **Other Testing.** | 54d | 2026-02-04 | 2026-04-20 | 203 | 42d | 0d |  | 280h |
| 225 | 1.6.3.1 | Security Testing. | 7d | 2026-02-04 | 2026-02-12 |  | 77d | 0d | Tester4 | 56h |
| 226 | 1.6.3.2 | Performance Testing. | 7d | 2026-03-10 | 2026-03-18 | 222 | 65d | 0d | Tester4 | 56h |
| 227 | 1.6.3.3 | Test reporting and defact tracking | 7d | 2026-04-10 | 2026-04-20 | 223 | 0d |  | Tester4 | 56h |
| 228 | 1.6.3.4 | Usability Testing. | 7d | 2026-02-04 | 2026-02-12 |  | 89d | 0d | Tester4 | 56h |
| 229 | 1.6.3.5 | Execute Test Cases: | 7d | 2026-02-13 | 2026-02-23 | 225 | 77d | 0d | Tester4 | 56h |
| 230 | 1.6.4 | **Test execution** | 40d | 2026-01-26 | 2026-03-20 |  | 47d | 0d |  | 688h |
| 231 | 1.6.4.1 | **UAT testing** | 26d | 2026-01-26 | 2026-03-02 | 208 | 77d | 0d |  | 256h |
| 232 | 1.6.4.1.1 | Prepare UAT evnironment | 5d | 2026-01-26 | 2026-01-30 |  | 98d | 0d | Tester1; Tester2 | 80h |
| 233 | 1.6.4.1.2 | Define auction testingscenarios | 5d | 2026-02-24 | 2026-03-02 | 229 | 77d | 0d | Tester1; Tester2 | 80h |
| 234 | 1.6.4.1.3 | Feedback from UAT team | 4d | 2026-01-26 | 2026-01-29 |  | 85d | 0d | Tester1; Tester2 | 64h |
| 235 | 1.6.4.1.4 | Sign off and documents | 2d | 2026-01-26 | 2026-01-27 |  | 89d | 0d | Tester1; Tester2 | 32h |

| ID | WBS | Task | Duration | Start | Finish | Predecessors | Total slack | Free slack | Resources | Work | Cost |
| --- | --- | --- | --- | --- | --- | --- | --- | --- | --- | --- | --- |
| 236 | 1.6.4.2 | **Integration Testing** | 21d | 2026-02-20 | 2026-03-20 | 203, 221 | 28d | 0d |  | 432h |  |
| 237 | 1.6.4.2.1 | Prepare testing evnironment | 5d | 2026-02-20 | 2026-02-26 |  | 47d | 0d | Tester4 | 40h |  |
| 238 | 1.6.4.2.2 | Add testing Cases | 5d | 2026-02-20 | 2026-02-26 | 234 | 70d | 0d | Tester4 | 40h |  |
| 239 | 1.6.4.2.3 | Front-end page Testing | 12d | 2026-02-20 | 2026-03-09 | 235 | 72d | 0d | Tester4 | 96h |  |
| 240 | 1.6.4.2.4 | Back-end API Testing | 14d | 2026-02-20 | 2026-03-11 |  | 28d | 0d | Tester4 | 112h |  |
| 241 | 1.6.4.2.5 | Performance Testing | 16d | 2026-02-27 | 2026-03-20 | 237 | 47d | 0d | Tester4 | 128h |  |
| 242 | 1.6.4.2.6 | Analyze Results: | 2d | 2026-02-27 | 2026-03-02 | 238 | 70d | 0d | Tester4 | 16h |  |
| 243 | 1.6.5 | **AI-based Bidding Algorithms Testing** | 292d | 2025-03-03 | 2026-04-13 |  | 47d | 0d |  | 472h |  |
| 244 | 1.6.5.1 | Define experimental and control users | 5d | 2025-03-03 | 2025-03-07 |  | 298d | 0d | Tester5 | 40h |  |
| 245 | 1.6.5.2 | Determine the test period | 4d | 2026-03-23 | 2026-03-26 | 241 | 47d | 0d | Tester5 | 32h |  |
| 246 | 1.6.5.3 | Monitoring indicators | 4d | 2026-03-03 | 2026-03-06 | 242 | 70d | 0d | Tester5 | 32h |  |
| 247 | 1.6.5.4 | Deploying new algorithms | 2d | 2025-03-03 | 2025-03-04 |  | 332d | 0d | Tester5 | 16h |  |
| 248 | 1.6.5.5 | New algorithm for data analysis | 12d | 2025-03-10 | 2025-03-25 | 244 | 298d | 0d | Tester5 | 96h |  |
| 249 | 1.6.5.6 | Algorithm optimization | 12d | 2026-03-27 | 2026-04-13 | 245 | 47d | 0d | Tester5 | 96h |  |
| 250 | 1.6.5.7 | Algorithm update | 3d | 2026-03-09 | 2026-03-11 | 246 | 70d | 0d | Tester5 | 24h |  |
| 251 | 1.6.5.8 | Continuous monitoring | 5d | 2025-03-05 | 2025-03-11 | 247 | 332d | 0d | Tester5 | 40h |  |
| 252 | 1.6.5.9 | Iterative optimization | 12d | 2025-03-26 | 2025-04-10 | 248 | 298d | 0d | Tester5 | 96h |  |
| 253 | 1.6.6 | **Test reporting and defect tracking** | 42d | 2026-04-21 | 2026-06-17 | 221, 240, 227 | 0d |  |  | 3160h | 204,800 |
| 254 | 1.6.6.1 | **Bug logging** | 12d | 2026-04-21 | 2026-05-06 |  | 4d | 0d |  | 704h |  |
| 255 | 1.6.6.1.1 | Classify Bug Logs | 5d | 2026-04-21 | 2026-04-27 |  | 37d | 0d | Tester1; Tester2 | 80h |  |
| 256 | 1.6.6.1.2 | Search for Bug Logs | 12d | 2026-04-21 | 2026-05-06 | 252 | 30d | 0d | Tester1; Tester2 | 192h |  |
| 257 | 1.6.6.1.3 | Organize Bug Report | 12d | 2026-04-21 | 2026-05-06 |  | 30d | 0d | Tester1; Tester2 | 192h |  |
| 258 | 1.6.6.1.4 | Send to Developers for Handling | 3d | 2026-04-21 | 2026-04-23 |  | 34d | 0d | Tester1; Tester2 | 48h |  |
| 259 | 1.6.6.1.5 | Add Bug Report Progress Tracking | 12d | 2026-04-21 | 2026-05-06 | 175 | 4d | 0d | Tester1; Tester2 | 192h |  |

| ID | WBS | Task | Duration | Start | Finish | Predecessors | Total slack | Free slack | Resources | Work | Cost |
| --- | --- | --- | --- | --- | --- | --- | --- | --- | --- | --- | --- |
| 260 | 1.6.6.2 | **Bug tracking** | 42d | 2026-04-21 | 2026-06-17 |  | 0d |  |  | 2456h | 204,800 |
| 261 | 1.6.6.2.1 | Add Bug Report Progress Tracking | 12d | 2026-04-21 | 2026-05-06 |  | 30d | 0d | Tester3; Tester4 | 192h |  |
| 262 | 1.6.6.2.2 | Display Report After Handling, Further Testing | 5d | 2026-04-24 | 2026-04-30 | 258 | 34d | 0d | Tester3; Tester4 | 80h |  |
| 263 | 1.6.6.2.3 | Bug Issue Resolution Completed | 2d | 2026-05-07 | 2026-05-08 | 259 | 4d | 0d | Tester3; Tester4 | 32h |  |
| 264 | 1.6.6.2.4 | **Deployment[Kailong Duan]** | 42d | 2026-04-21 | 2026-06-17 |  | 0d |  |  | 2152h | 204,800 |
| 265 | 1.6.6.2.4.1 | **Deployment plan** | 31d | 2026-04-21 | 2026-06-02 |  | 2d | 0d |  | 248h | 12,400 |
| 266 | 1.6.6.2.4.1.1 | Add deployment target/ requirement | 5d | 2026-04-21 | 2026-04-27 |  | 5d | 0d | Deploy-eng-4 | 40h |  |
| 267 | 1.6.6.2.4.1.2 | Connect to the code repository | 5d | 2026-05-11 | 2026-05-15 | 263 | 4d | 0d | Deploy-eng-4 | 40h |  |
| 268 | 1.6.6.2.4.1.3 | Pull the latest code changes | 3d | 2026-04-21 | 2026-04-23 |  | 12d | 0d | Deploy-eng-4 | 24h |  |
| 269 | 1.6.6.2.4.1.4 | Deploy the application | 3d | 2026-04-21 | 2026-04-23 |  | 2d | 0d | Deploy-eng-4 | 24h |  |
| 270 | 1.6.6.2.4.1.5 | Build the application | 3d | 2026-04-28 | 2026-04-30 | 266 | 5d | 0d | Deploy-eng-4 | 24h |  |
| 271 | 1.6.6.2.4.1.6 | Verify functionality | 12d | 2026-05-18 | 2026-06-02 | 267 | 4d | 0d | Deploy-eng-4 | 96h |  |
| 272 | 1.6.6.2.4.2 | **Infrastructure Setup** | 38d | 2026-04-21 | 2026-06-11 |  | 0d |  |  | 464h | 23,200 |
| 273 | 1.6.6.2.4.2.1 | Purchase hardware and software | 3d | 2026-04-21 | 2026-04-23 |  | 27d | 0d | Deploy-eng-1; Deploy-eng-2 | 48h |  |
| 274 | 1.6.6.2.4.2.2 | Hardware installment | 7d | 2026-05-01 | 2026-05-11 | 270 | 5d | 0d | Deploy-eng-1; Deploy-eng-2 | 112h |  |
| 275 | 1.6.6.2.4.2.3 | CPU, GPU, Memory,Server, Network,Ram | 7d | 2026-06-03 | 2026-06-11 | 271 | 4d | 0d | Deploy-eng-1; Deploy-eng-2 | 112h |  |
| 276 | 1.6.6.2.4.2.4 | Software installment | 5d | 2026-04-21 | 2026-04-27 |  | 0d |  | Deploy-eng-2; Deploy-eng-1 | 80h |  |
| 277 | 1.6.6.2.4.2.5 | jenkins, docker, linux, database | 7d | 2026-04-24 | 2026-05-04 | 273 | 27d | 0d | Deploy-eng-2; Deploy-eng-1 | 112h |  |
| 278 | 1.6.6.2.4.3 | **Configuration** | 22d | 2026-04-24 | 2026-05-25 | 269 | 2d | 0d |  |  | 20,000 |
| 279 | 1.6.6.2.4.3.1 | Build dev environment | 5d | 2026-05-12 | 2026-05-18 | 274 | 5d | 0d |  |  |  |
| 280 | 1.6.6.2.4.3.2 | Build testing environment | 5d | 2026-04-28 | 2026-05-04 | 276 | 0d |  |  |  |  |
| 281 | 1.6.6.2.4.3.3 | Build produce environment | 5d | 2026-05-05 | 2026-05-11 | 277 | 27d | 0d |  |  |  |
| 282 | 1.6.6.2.4.3.4 | configure the network | 5d | 2026-04-24 | 2026-04-30 |  | 8d | 0d |  |  |  |
| 283 | 1.6.6.2.4.3.5 | configure firewall and security | 5d | 2026-05-19 | 2026-05-25 | 279 | 5d | 0d |  |  |  |

| ID | WBS | Task | Duration | Start | Finish | Predecessors | Total slack | Free slack | Resources | Work | Cost |
| --- | --- | --- | --- | --- | --- | --- | --- | --- | --- | --- | --- |
| 284 | 1.6.6.2.4.4 | **AI-based Bidding Algorithm Deploy** | 37d | 2026-04-21 | 2026-06-10 |  | 5d | 0d |  | 480h | 24,000 |
| 285 | 1.6.6.2.4.4.1 | Model Export | 5d | 2026-04-24 | 2026-04-30 | 268 | 12d | 0d | Deploy-eng-4 | 40h |  |
| 286 | 1.6.6.2.4.4.2 | Add data monitoring | 14d | 2026-05-01 | 2026-05-20 | 282 | 8d | 0d | Deploy-eng-4 | 112h |  |
| 287 | 1.6.6.2.4.4.3 | Inference Service | 12d | 2026-05-26 | 2026-06-10 | 283 | 5d | 0d | Deploy-eng-4 | 96h |  |
| 288 | 1.6.6.2.4.4.4 | Continuous Updates (CI/CD) | 12d | 2026-04-21 | 2026-05-06 |  | 30d | 0d | Deploy-eng-4 | 96h |  |
| 289 | 1.6.6.2.4.4.5 | Build version vontrol | 5d | 2026-05-01 | 2026-05-07 | 285 | 12d | 0d | Deploy-eng-4 | 40h |  |
| 290 | 1.6.6.2.4.4.6 | Iterative update | 12d | 2026-05-21 | 2026-06-05 | 286 | 8d | 0d | Deploy-eng-4 | 96h |  |
| 291 | 1.6.6.2.4.5 | **Deploy Solution** | 42d | 2026-04-21 | 2026-06-17 |  | 0d |  |  | 960h | 125,200 |
| 292 | 1.6.6.2.4.5.1 | Final Deployment Verification | 3d | 2026-05-05 | 2026-05-07 | 280 | 0d |  |  |  |  |
| 293 | 1.6.6.2.4.5.2 | **Product Released** | 27d | 2026-04-21 | 2026-05-27 |  | 12d | 0d |  |  | 9,600 |
| 294 | 1.6.6.2.4.5.2.1 | Validate Feedback collection | 14d | 2026-05-08 | 2026-05-27 | 289 | 12d | 0d |  |  |  |
| 295 | 1.6.6.2.4.5.2.2 | Environment Health Check | 3d | 2026-04-21 | 2026-04-23 |  | 24d | 0d |  |  |  |
| 296 | 1.6.6.2.4.5.2.3 | Product Released | 7d | 2026-05-08 | 2026-05-18 | 292 | 0d |  |  |  |  |
| 297 | 1.6.6.2.4.5.3 | **Release Process** | 27d | 2026-04-24 | 2026-06-01 |  | 12d | 0d |  |  | 4,400 |
| 298 | 1.6.6.2.4.5.3.1 | Define Release Methodology: | 3d | 2026-05-28 | 2026-06-01 | 293 | 12d | 0d |  |  |  |
| 299 | 1.6.6.2.4.5.3.2 | Rollout Plan | 3d | 2026-04-24 | 2026-04-28 | 295 | 24d | 0d |  |  |  |
| 300 | 1.6.6.2.4.5.3.3 | Test in Production | 5d | 2026-05-19 | 2026-05-25 | 296 | 0d |  |  |  |  |
| 301 | 1.6.6.2.4.5.4 | **Release Management** | 24d | 2026-04-29 | 2026-06-01 |  | 7d | 0d |  | 352h | 17,600 |
| 302 | 1.6.6.2.4.5.4.1 | Version Control& Tracking: | 12d | 2026-05-12 | 2026-05-27 | 274 | 10d | 0d | Deploy-eng-1; Deploy-eng-2 | 192h |  |
| 303 | 1.6.6.2.4.5.4.2 | Build CI/CD Pipeline | 5d | 2026-04-29 | 2026-05-05 | 299 | 24d | 0d | Deploy-eng-1; Deploy-eng-2 | 80h |  |
| 304 | 1.6.6.2.4.5.4.3 | Automated Rollback | 5d | 2026-05-26 | 2026-06-01 | 300 | 0d |  | Deploy-eng-1; Deploy-eng-2 | 80h |  |
| 305 | 1.6.6.2.4.5.5 | **Gather and Analysis** | 42d | 2026-04-21 | 2026-06-17 |  | 0d |  |  | 608h | 30,400 |
| 306 | 1.6.6.2.4.5.5.1 | Data Logging and Tracking: | 5d | 2026-06-02 | 2026-06-08 | 301 | 7d | 0d | Deploy-eng-1; Deploy-eng-2 | 80h |  |
| 307 | 1.6.6.2.4.5.5.2 | User Analytics | 7d | 2026-05-06 | 2026-05-14 | 303 | 24d | 0d | Deploy-eng-1; Deploy-eng-2 | 112h |  |
| 308 | 1.6.6.2.4.5.5.3 | Business Impact Analysis | 12d | 2026-06-02 | 2026-06-17 | 304 | 0d |  | Deploy-eng-1; Deploy-eng-2 | 192h |  |
| 309 | 1.6.6.2.4.5.5.4 | Continuous Improvement | 14d | 2026-04-21 | 2026-05-08 |  | 28d | 0d | Deploy-eng-1; Deploy-eng-2 | 224h |  |
